Schedule from MS Project, 2018-02-26 to 2018-04-17, A marks actual dates.

## Calendars

- Standard: Mon-Fri 08:00-12:00, 13:00-17:00; Sat-Sun off.

## Resources

| Resource |
| --- |
| Bella |
| Bright |
| Linsee |
| Stone |
| Adam |

## Schedule

| ID | WBS | Task | Duration | Start | Finish | Predecessors | Complete | Remaining | Baseline start | Baseline finish | Baseline duration | Total slack | Constraint | Resources | Work | Actual work |
| --- | --- | --- | --- | --- | --- | --- | --- | --- | --- | --- | --- | --- | --- | --- | --- | --- |
| 1 | 1 | **Database Migration Plan** | 36.7d | 2018-02-26 A | 2018-04-17 |  | 83% | 6.17d | 2018-02-26 | 2018-04-03 | 26.7d | 0d |  |  | 773h | 593.6h |
| 2 | 1.1 | **1. Prepare environment** | 2d | 2018-02-26 A | 2018-02-27 |  | 33% | 1.33d | 2018-02-26 | 2018-02-27 | 2d | 34.7d |  |  | 24h | 8h |
| 3 | 1.1.1 | Development environment | 1d | 2018-02-26 A | 2018-02-26 A |  | 100% |  | 2018-02-26 | 2018-02-26 | 1d |  | start no earlier than 2018-02-26 | Stone | 8h | 8h |
| 4 | 1.1.2 | Stage environment | 1d | 2018-02-26 | 2018-02-26 |  |  |  | 2018-02-26 | 2018-02-26 | 1d | 35.7d |  | Adam | 8h |  |
| 5 | 1.1.3 | Production environment | 1d | 2018-02-27 | 2018-02-27 |  |  |  | 2018-02-27 | 2018-02-27 | 1d | 34.7d |  | Adam | 8h |  |
| 6 | 1.2 | **2. Tools for Oracle Conversion to Sql Server** | 27d | 2018-02-27 A | 2018-04-04 A | 3 | 100% |  | 2018-02-27 | 2018-03-19 | 15d |  |  |  | 176h | 176h |
| 7 | 1.2.1 | **Table structure conversion** | 27d | 2018-02-27 A | 2018-04-04 A |  | 100% |  | 2018-02-27 | 2018-03-12 | 10d |  |  |  | 128h | 128h |
| 8 | 1.2.1.1 | Data type conversion | 5d | 2018-02-27 A | 2018-03-05 A |  | 100% |  | 2018-02-27 | 2018-03-05 | 5d |  |  | Stone | 40h | 40h |
| 9 | 1.2.1.2 | Aggregation type conversion | 11d | 2018-03-06 A | 2018-04-04 A | 8 | 100% |  | 2018-03-06 | 2018-03-12 | 5d |  | finish no earlier than 2018-04-04 | Stone | 88h | 88h |
| 10 | 1.2.2 | Table data conversion | 16.5d | 2018-03-13 A | 2018-04-04 A | 9 | 100% |  | 2018-03-13 | 2018-03-19 | 5d |  | finish no earlier than 2018-04-04 | Stone | 48h | 48h |
| 11 | 1.3 | 3. Test SQL script | 2d | 2018-03-02 A | 2018-03-06 A | 6SS+4d | 100% |  | 2018-03-02 | 2018-03-06 | 2d |  |  | Bright; Linsee | 16h | 16h |
| 12 | 1.4 | **4. Modify Dao layer** | 31.5d | 2018-02-26 A | 2018-04-10 A |  | 100% |  | 2018-02-26 | 2018-04-02 | 25.5d |  |  |  | 216h | 216h |
| 13 | 1.4.1 | Implement SQLServerDaoBase | 5d | 2018-02-26 A | 2018-03-02 A |  | 100% |  | 2018-02-26 | 2018-03-02 | 5d |  |  | Bright; Linsee | 80h | 80h |
| 14 | 1.4.2 | Increment ID processing | 5d | 2018-03-05 A | 2018-03-09 A | 13 | 100% |  | 2018-03-05 | 2018-03-09 | 5d |  |  | Bright | 40h | 40h |
| 15 | 1.4.3 | Dao Test | 3d | 2018-03-12 A | 2018-03-14 A |  | 100% |  | 2018-03-12 | 2018-03-14 | 3d |  |  | Bright | 24h | 24h |
| 16 | 1.4.4 | **Datatype processing** | 24.5d | 2018-03-07 A | 2018-04-10 A |  | 100% |  | 2018-03-07 | 2018-04-02 | 18.5d |  |  |  | 72h | 72h |
| 17 | 1.4.4.1 | TIMESTAMP(9) | 1.5d | 2018-03-15 A | 2018-03-16 A |  | 100% |  | 2018-03-15 | 2018-03-16 | 1.5d |  |  | Bright | 12h | 12h |
| 18 | 1.4.4.2 | TIMESTAMP(6) | 1.5d | 2018-03-16 A | 2018-03-19 A |  | 100% |  | 2018-03-16 | 2018-03-19 | 1.5d |  |  | Bright | 12h | 12h |
| 19 | 1.4.4.3 | DATE | 1.5d | 2018-03-12 A | 2018-03-13 A |  | 100% |  | 2018-03-29 | 2018-03-30 | 1.5d |  |  | Bright | 12h | 12h |
| 20 | 1.4.4.4 | VARCHAR2 | 1.5d | 2018-03-07 A | 2018-03-08 A |  | 100% |  | 2018-03-07 | 2018-03-08 | 1.5d |  |  | Linsee | 12h | 12h |
| 21 | 1.4.4.5 | NVARCHAR2 | 1.5d | 2018-03-08 A | 2018-04-06 A |  | 100% |  | 2018-03-08 | 2018-03-09 | 1.5d |  |  | Linsee | 12h | 12h |
| 22 | 1.4.4.6 | NUMBER | 1.5d | 2018-04-09 A | 2018-04-10 A |  | 100% |  | 2018-03-29 | 2018-03-30 | 1.5d |  |  | Linsee | 12h | 12h |
| 23 | 1.5 | **5. Test for dao layer** | 5d | 2018-03-12 A | 2018-03-16 A | 12SS+8d | 100% |  | 2018-03-09 | 2018-03-23 | 10d |  |  |  | 48h | 48h |
| 24 | 1.5.1 | Move eServiceDao/DaoTest to CommonLibrary | 4d | 2018-03-13 A | 2018-03-16 A |  | 100% |  |  |  |  |  | finish no earlier than 2018-03-16 | Bright | 32h | 32h |
| 25 | 1.5.2 | Analysis of Entity DateType | 2d | 2018-03-12 A | 2018-03-13 A |  | 100% |  |  |  |  |  |  | Linsee | 16h | 16h |

Notes:
- 2: 1. 准备Oracle和Sql Server的环境 / 开发环境 / Stage环境 / 生产环境

| ID | WBS | Task | Duration | Start | Finish | Predecessors | Complete | Remaining | Baseline start | Baseline finish | Baseline duration | Total slack | Constraint | Resources | Work | Actual work |
| --- | --- | --- | --- | --- | --- | --- | --- | --- | --- | --- | --- | --- | --- | --- | --- | --- |
| 26 | 1.6 | **6. Architectural Pototype** | 3d | 2018-03-19 A | 2018-03-21 A |  | 100% |  |  |  |  |  |  |  | 25.6h | 25.6h |
| 27 | 1.6.1 | Create SQL Server table which included in architectural pototype | 0.2d | 2018-03-19 A | 2018-03-19 A |  | 100% |  |  |  |  |  |  | Linsee | 1.6h | 1.6h |
| 28 | 1.6.2 | Transfer data by migration tool | 0.5d | 2018-03-19 A | 2018-03-19 A |  | 100% |  |  |  |  |  |  | Stone | 4h | 4h |
| 29 | 1.6.3 | Modify datatype in SqlServer | 0.5d | 2018-03-19 A | 2018-03-19 A |  | 100% |  |  |  |  |  |  | Linsee | 4h | 4h |
| 30 | 1.6.4 | Test dao layer | 2d | 2018-03-20 A | 2018-03-21 A |  | 100% |  |  |  |  |  | start no earlier than 2018-03-19 | Bright | 16h | 16h |
| 31 | 1.7 | **7. Implement Database Migration** | 7d | 2018-03-21 A | 2018-03-29 A | 26 | 100% |  |  |  |  |  |  |  | 80h | 80h |
| 32 | 1.7.1 | Security Data Migration | 1d | 2018-03-21 A | 2018-03-21 A |  | 100% |  |  |  |  |  |  | Linsee | 8h | 8h |
| 33 | 1.7.2 | Reference Data Migration | 2d | 2018-03-21 A | 2018-03-23 A | 32 | 100% |  |  |  |  |  |  | Linsee; Bright | 16h | 16h |
| 34 | 1.7.3 | CallSheet Data Migration | 2d | 2018-03-26 A | 2018-03-27 A | 33 | 100% |  |  |  |  |  |  | Linsee | 16h | 16h |
| 35 | 1.7.4 | RigJob Data Migration | 0.5d | 2018-03-26 A | 2018-03-26 A | 33 | 100% |  |  |  |  |  |  | Bright | 4h | 4h |
| 36 | 1.7.5 | ProductHaul Data Migration | 0.5d | 2018-03-28 A | 2018-03-28 A |  | 100% |  |  |  |  |  |  | Bright | 4h | 4h |
| 37 | 1.7.6 | Job Data Migration | 1d | 2018-03-26 A | 2018-03-27 A |  | 100% |  |  |  |  |  |  | Bright | 8h | 8h |
| 38 | 1.7.7 | ServiceTicket Data Migration | 1d | 2018-03-27 A | 2018-03-28 A |  | 100% |  |  |  |  |  |  | Bright | 8h | 8h |
| 39 | 1.7.8 | ServiceReport Data Migration | 1d | 2018-03-28 A | 2018-03-28 A | 34 | 100% |  |  |  |  |  |  | Linsee | 8h | 8h |
| 40 | 1.7.9 | Program Data Migration | 1d | 2018-03-29 A | 2018-03-29 A | 39 | 100% |  |  |  |  |  |  | Linsee | 8h | 8h |
| 41 | 1.8 | 8. System Test | 3d | 2018-03-30 A | 2018-04-03 | 31 | 50% | 1.5d |  |  |  | 0d |  | Bright; Linsee | 48h | 24h |
| 42 | 1.9 | **9. Stage Test** | 7.7d | 2018-04-04 | 2018-04-13 | 41 |  |  | 2018-03-26 | 2018-03-30 | 4.7d | 0d |  |  | 120.2h |  |
| 43 | 1.9.1 | Create SQL Server table structure | 0.2d | 2018-04-04 | 2018-04-04 | 11 |  |  | 2018-03-26 | 2018-03-26 | 0.2d | 0d |  | Stone | 1.6h |  |
| 44 | 1.9.2 | Table data conversion | 2d | 2018-04-04 | 2018-04-06 | 43 |  |  | 2018-03-26 | 2018-03-28 | 2d | 0d |  | Stone | 16h |  |
| 45 | 1.9.3 | Switch to SQLServerDao and run solution | 0.2d | 2018-04-13 | 2018-04-13 | 44 |  |  | 2018-03-30 | 2018-03-30 | 0.2d | 0d |  | Linsee | 1.6h |  |
| 46 | 1.9.4 | Test and fix bugs | 7.5d | 2018-04-04 | 2018-04-13 |  |  |  | 2018-03-26 | 2018-03-28 | 3d | 0.2d |  | Bright; Linsee | 101h |  |
| 47 | 1.10 | **10. Production environment deployment** | 2d | 2018-04-13 | 2018-04-17 | 42 |  |  | 2018-03-30 | 2018-04-03 | 2d | 0d |  |  | 19.2h |  |
| 48 | 1.10.1 | Create SQL Server table structure | 0.2d | 2018-04-13 | 2018-04-13 |  |  |  | 2018-03-30 | 2018-03-30 | 0.2d | 1.8d |  | Adam | 1.6h |  |
| 49 | 1.10.2 | Table data conversion | 2d | 2018-04-13 | 2018-04-17 |  |  |  | 2018-03-30 | 2018-04-03 | 2d | 0d |  | Adam | 16h |  |
| 50 | 1.10.3 | Switch to SQLServerDao and run solution | 0.2d | 2018-04-13 | 2018-04-13 |  |  |  | 2018-03-30 | 2018-03-30 | 0.2d | 1.8d |  | Adam | 1.6h |  |

Notes:
- 44: 数据迁移的时间需要在stage环境进行测试
