Schedule from MS Project, 2018-05-07 to 2018-06-18, A marks actual dates.

## Calendars

- Standard: Mon-Fri 08:00-12:00, 13:00-17:00; Sat-Sun off.

## Resources

| Resource |
| --- |
| Bella |
| Bright |
| Linsee |
| Stone |
| Adam |
| Bessie |
| Olivia |
| Bela |

## Schedule

| ID | WBS | Task | Duration | Start | Finish | Predecessors | Complete | Remaining | Baseline start | Baseline finish | Baseline duration | Baseline 1 start | Baseline 1 finish | Total slack | Constraint | Resources | Work | Actual work |
| --- | --- | --- | --- | --- | --- | --- | --- | --- | --- | --- | --- | --- | --- | --- | --- | --- | --- | --- |
| 1 | 1 | **FDAC Project Plan** | 30.5d? | 2018-05-07 A | 2018-06-18 |  | 85% | 4.69d? | 2018-05-07 | 2018-05-21 | 10.7d | 2018-05-07 | 2018-05-22 | 0d |  |  | 592h | 524h |
| 2 | 1.1 | **FDAC Archtecture Prototype Phase 1** | 5.5d | 2018-05-07 A | 2018-05-14 |  | 83% | 0.92d | 2018-05-07 | 2018-05-14 | 5.5d | 2018-05-07 | 2018-05-14 | 25d |  |  | 156h | 144h |
| 3 | 1.1.1 | Requirements anylsis | 3d | 2018-05-07 | 2018-05-09 |  |  |  | 2018-05-07 | 2018-05-09 | 3d | 2018-05-07 | 2018-05-09 | 27.5d |  | Bella [50%] | 12h |  |
| 4 | 1.1.2 | **1. Build MetaShare CommonCore** | 5.5d | 2018-05-07 A | 2018-05-14 A |  | 100% |  | 2018-05-07 | 2018-05-14 | 5.5d | 2018-05-07 | 2018-05-14 |  |  |  | 40h | 40h |
| 5 | 1.1.2.1 | 1.1 Design for CommonCore | 1d | 2018-05-11 A | 2018-05-14 A |  | 100% |  | 2018-05-11 | 2018-05-14 | 1d | 2018-05-11 | 2018-05-14 |  |  | Bela | 8h | 8h |
| 6 | 1.1.2.2 | 1.2 Create CommonCore solution with .net standard and resolve compatibility issues | 3d | 2018-05-08 A | 2018-05-10 A |  | 100% |  | 2018-05-08 | 2018-05-10 | 3d | 2018-05-08 | 2018-05-10 |  | start no earlier than 2018-05-08 | Bela | 24h | 24h |
| 7 | 1.1.2.3 | 1.6 TestSQLite Database Prepare | 1d | 2018-05-07 A | 2018-05-07 A |  | 100% |  | 2018-05-07 | 2018-05-07 | 1d | 2018-05-07 | 2018-05-07 |  |  | Stone | 8h | 8h |
| 8 | 1.1.3 | **2. Web interface for real-time charting** | 5d | 2018-05-07 A | 2018-05-11 A |  | 100% |  | 2018-05-07 | 2018-05-11 | 5d | 2018-05-07 | 2018-05-11 |  |  |  | 64h | 64h |
| 9 | 1.1.3.1 | 2.1 Display X/Y axis - step size is dynamic | 2d | 2018-05-07 A | 2018-05-08 A |  | 100% |  | 2018-05-07 | 2018-05-08 | 2d | 2018-05-07 | 2018-05-08 |  |  | Linsee; Stone | 24h | 24h |
| 10 | 1.1.3.2 | 2.2 Display line chart with data feeding @ 1Hz | 0.5d | 2018-05-09 A | 2018-05-09 A |  | 100% |  | 2018-05-09 | 2018-05-09 | 0.5d | 2018-05-09 | 2018-05-09 |  |  | Linsee | 4h | 4h |
| 11 | 1.1.3.3 | 2.3 Display multiple lines in same chart @ same Y axis | 0.5d | 2018-05-07 A | 2018-05-07 A |  | 100% |  | 2018-05-07 | 2018-05-07 | 0.5d | 2018-05-07 | 2018-05-07 |  |  | Bright | 4h | 4h |
| 12 | 1.1.3.4 | 2.6 Create FDAC project and consistent with the structure of online | 2d | 2018-05-10 A | 2018-05-11 A |  | 100% |  | 2018-05-10 | 2018-05-11 | 2d | 2018-05-10 | 2018-05-11 |  | start no earlier than 2018-05-10 | Bright; Linsee | 32h | 32h |
| 13 | 1.1.4 | 3.1 Design for Chart Printing in PDF format | 2d | 2018-05-09 A | 2018-05-10 A | 9 | 100% |  | 2018-05-09 | 2018-05-10 | 2d | 2018-05-09 | 2018-05-10 |  |  | Olivia | 16h | 16h |
| 14 | 1.1.5 | 4. Email Sending | 3d | 2018-05-07 A | 2018-05-09 A |  | 100% |  | 2018-05-07 | 2018-05-09 | 3d | 2018-05-07 | 2018-05-09 |  |  | Bessie; Bright | 24h | 24h |
| 15 | 1.2 | **FDAC Archtecture Prototype Phase 2** | 14.5d | 2018-05-14 A | 2018-06-01 A | 2 | 100% |  | 2018-05-14 | 2018-05-21 | 5.2d | 2018-05-14 | 2018-05-22 |  |  |  | 228h | 228h |
| 16 | 1.2.1 | **1. Build MetaShare CommonCore** | 9.5d | 2018-05-14 A | 2018-05-25 A |  | 100% |  |  |  |  | 2018-05-14 | 2018-05-18 |  |  |  | 76h | 76h |
| 17 | 1.2.1.1 | 1.7 Refactor CommonLibrary to .net standard | 9.5d | 2018-05-14 A | 2018-05-25 A |  | 100% |  |  |  |  | 2018-05-14 | 2018-05-16 |  | finish no earlier than 2018-05-25 | Bela | 76h | 76h |
| 18 | 1.2.2 | 2.1 Display X/Y axis - step size is dynamic | 1d | 2018-05-31 A | 2018-05-31 A | 16 | 100% |  |  |  |  | 2018-05-18 | 2018-05-21 |  |  | Stone | 8h | 8h |
| 19 | 1.2.3 | 2.7 Implement ChartLibrary prototype | 2d | 2018-05-14 A | 2018-05-16 A |  | 100% |  |  |  |  |  |  |  |  | Stone; Linsee | 32h | 32h |
| 20 | 1.2.4 | 2.8 Implement dynamic pass parameters to Chart | 1d | 2018-05-31 A | 2018-06-01 A | 16 | 100% |  |  |  |  | 2018-05-18 | 2018-05-22 |  |  | Linsee | 8h | 8h |
| 21 | 1.2.5 | 3.2 Implement Chart Printing in PDF format prototype | 10d | 2018-05-14 A | 2018-05-28 A |  | 100% |  | 2018-05-14 | 2018-05-21 | 5d | 2018-05-14 | 2018-05-17 |  | start no earlier than 2018-05-11 | Olivia | 80h | 80h |
| 22 | 1.2.6 | 2.4 Display multiple lines in same chart @ two different Y axis | 1d | 2018-05-31 A | 2018-05-31 A | 16 | 100% |  | 2018-05-14 | 2018-05-15 | 1d | 2018-05-18 | 2018-05-21 |  |  | Bright | 8h | 8h |
| 23 | 1.2.7 | 2.5 Dynamically adjust X axis for displaying more data | 2d | 2018-05-31 A | 2018-06-01 A | 16 | 100% |  | 2018-05-14 | 2018-05-16 | 2d | 2018-05-18 | 2018-05-22 |  |  | Linsee | 16h | 16h |
| 24 | 1.3 | **FDAC Archtecture Prototype Phase 3** | 10.5d? | 2018-06-04 A | 2018-06-18 | 15 | 70% | 3.11d? |  |  |  |  |  | 0d |  |  | 208h | 152h |
| 25 | 1.3.1 | 2.7 Implement ChartLibrary prototype | 8d | 2018-06-04 A | 2018-06-15 |  | 38% | 5d |  |  |  |  |  | 0d |  | Stone; Bright | 64h | 24h |
| 26 | 1.3.2 | 1.4 Modify MetaShare CommonCore to support Sqlite | 10d | 2018-06-04 A | 2018-06-15 A |  | 100% |  | 2018-05-17 | 2018-05-18 | 1d | 2018-05-17 | 2018-05-17 |  | start no earlier than 2018-05-29 | Bela | 80h | 80h |
| 27 | 1.3.3 | 1.3 Test CommonCore in Windows and Linux | 3d | 2018-06-04 A | 2018-06-06 A | 17 | 100% |  | 2018-05-16 | 2018-05-17 | 1d | 2018-05-16 | 2018-05-17 |  | start no earlier than 2018-05-07 | Linsee | 24h | 24h |
| 28 | 1.3.4 | 1.8 Research for SQLite implementation mechanism | 3d | 2018-06-13 A | 2018-06-15 A |  | 100% |  |  |  |  |  |  |  | start no earlier than 2018-06-13 | Stone | 24h | 24h |
| 29 | 1.3.5 | Test | 2d | 2018-06-14 | 2018-06-18 | 25FS-1d |  |  | 2018-05-18 | 2018-05-21 | 1d | 2018-05-21 | 2018-05-22 | 0d |  | Bella | 16h |  |

Notes:
- 2: 1. 准备Oracle和Sql Server的环境 / 开发环境 / Stage环境 / 生产环境
- 6: 不支持WCF/NUnit/SQLite
- 21: 目前eService中有一个Sanjel Print Service，它是基于O2 Solutions的PDF4NET库，我们的版本已经是4年前的了。我们的打印实现没有打印曲线的部分。新的设计可以考虑换用Syncfusion的库，你们目前是有license的。根据以往的经验，新的产品往往会比旧的产品更易用和稳定，所以更换底层库是时常发生的。而为保证我们自身的代码的稳定，设计上我们不直接依赖第三方的库，而是建立一个Adaptor来解耦依赖。
- 25: 实时画图的架构原型重做 / 上个月实现的原型不能串起来成为一个可以工作的模式，所以推倒重来。
