Schedule from MS Project, 2009-11-16 to 2024-04-03, A marks actual dates.
Microsoft

## Calendars

- 标准: Mon-Fri 08:00-12:00, 13:00-17:00; Sat-Sun off.

## Resources

| Resource |
| --- |
| 张院 |
| 童韬 |
| 孙婷 |
| 李英 |
| Migule |
| Adam |

## Schedule

| ID | WBS | Task | Type | Duration | Start | Finish | Predecessors | Complete | Remaining | Total slack | Free slack | Constraint | Resources | Work | Actual work |
| --- | --- | --- | --- | --- | --- | --- | --- | --- | --- | --- | --- | --- | --- | --- | --- |
| 1 | 1 | **MetaShare Project Statement** |  | 3752d? | 2009-11-16 A | 2024-04-03 |  | 20% | 3016.81d? | 0d |  |  |  | 544h | 116h |
| 2 | 1.1 | Project management |  | 6d | 2024-03-06 | 2024-03-14 |  |  |  | 14d |  | start no earlier than 2024-03-06 | 李英 | 48h |  |
| 3 | 1.2 | Requirements analysis and clarification |  | 5d | 2024-03-06 | 2024-03-13 |  |  |  | 15d |  | start no earlier than 2024-03-06 | 孙婷 | 40h |  |
| 4 | 1.3 | **eService & eProgram** |  | 3738d | 2009-11-16 A | 2024-03-14 |  | 43% | 2136d | 14d |  |  |  | 56h | 24h |
| 5 | 1.3.1 | Excess import - eProgram#164 |  | 3d | 2024-03-05 A | 2024-03-08 A |  | 100% |  |  |  | start no earlier than 2024-03-05 | 童韬 | 24h | 24h |
| 6 | 1.3.2 | MPC | milestone | 0d | 2009-11-16 A | 2009-11-16 A |  | 100% |  |  |  |  |  |  |  |
| 7 | 1.3.3 | **Supervisor - Prevent removal of units in eService** |  | 3734d | 2009-11-16 A | 2024-03-08 A |  | 100% |  |  |  |  |  |  |  |
| 8 | 1.3.3.1 | Prevent removal of units in eService | milestone | 0d | 2009-11-16 A | 2009-11-16 A |  | 100% |  |  |  |  |  |  |  |
| 9 | 1.3.3.2 | With the integration of product hauls, this cannot be removed from eService job package. | milestone | 0d | 2024-03-08 A | 2024-03-08 A |  | 100% |  |  |  |  |  |  |  |
| 10 | 1.3.3.3 | Units can be modified, but not removed when a product haul. This is the desired behavior. | milestone | 0d | 2024-03-08 A | 2024-03-08 A |  | 100% |  |  |  |  |  |  |  |
| 11 | 1.3.4 | **Bug Fix** |  | 0d | 2024-03-08 A | 2024-03-08 A |  | 100% |  |  |  |  |  |  |  |
| 12 | 1.3.4.1 | Replace expired client secret value in the eService MailUtility#34 | milestone | 0d | 2024-03-08 A | 2024-03-08 A | 10 | 100% |  |  |  |  | Adam |  |  |
| 13 | 1.3.4.2 | POR pricing distribution bug fix | milestone | 0d | 2024-03-08 A | 2024-03-08 A |  | 100% |  |  |  |  |  |  |  |
| 14 | 1.3.5 | Test Case & Test |  | 4d | 2024-03-08 | 2024-03-14 | 9 |  |  | 10d | 0d |  | 孙婷 | 32h |  |
| 15 | 1.3.6 | eProgram 6.12 release | milestone | 0d | 2024-03-14 | 2024-03-14 | 14 |  |  | 14d |  |  |  |  |  |
| 16 | 1.3.7 | eService 6.12 release | milestone | 0d | 2024-03-14 | 2024-03-14 | 14 |  |  | 14d |  |  |  |  |  |
| 17 | 1.4 | **eService Express** |  | 17d? | 2024-03-11 A | 2024-04-03 |  | 25% | 12.75d? | 0d |  |  |  | 208h | 52h |
| 18 | 1.4.1 | MQTT installation packing and support Sanjel deployment and testing |  | 4d | 2024-03-11 | 2024-03-15 | 30 |  |  | 1.5d | 0d | start no earlier than 2024-03-08 | 张院 | 32h |  |
| 19 | 1.4.2 | Add 4 Inch Coriolis Rate to WITS setting#161 |  | 6d | 2024-03-15 A | 2024-03-25 | 18 | 25% | 4.5d | 0d |  |  | 张院 | 48h | 12h |
| 20 | 1.4.3 | **Bug Fix** |  | 11d? | 2024-03-19 A | 2024-04-03 |  | 42% | 6.42d? | 0d |  |  |  | 96h | 40h |
| 21 | 1.4.3.1 | WITS setting issue working for two trucks |  | 3d | 2024-03-19 A | 2024-03-22 A | 12 | 100% |  |  |  |  | 童韬 | 24h | 24h |
| 22 | 1.4.3.2 | **Messaging Library Upgrade - Post Job Data#165** |  | 7d? | 2024-03-25 | 2024-04-03 |  |  |  | 0d |  |  |  | 56h |  |
| 23 | 1.4.3.2.1 | Update eService Express for release |  | 3d | 2024-03-25 | 2024-03-28 | 19 |  |  | 0d |  |  | 张院 | 24h |  |
| 24 | 1.4.3.2.2 | MQTT Server deployment |  | 3d | 2024-03-28 | 2024-04-02 | 23 |  |  | 0d |  |  | 张院 | 24h |  |
| 25 | 1.4.3.2.3 | Post Job Data server end deployment |  | 1d? | 2024-04-02 | 2024-04-03 | 24 |  |  | 0d |  |  | 张院 | 8h |  |
| 26 | 1.4.3.3 | Post Job page header is broken.#167 |  | 2d | 2024-03-22 A | 2024-03-26 A | 21 | 100% |  |  |  |  | 童韬 | 16h | 16h |
| 27 | 1.4.4 | Test Case & Test |  | 4d | 2024-03-14 | 2024-03-20 | 14 |  |  | 10d | 0d |  | 孙婷 | 32h |  |
| 28 | 1.4.5 | eService Express 1.2.2.31 Field Trial | milestone | 0d | 2024-03-20 | 2024-03-20 | 27 |  |  | 10d |  |  |  |  |  |

| ID | WBS | Task | Type | Duration | Start | Finish | Predecessors | Complete | Remaining | Total slack | Free slack | Constraint | Resources | Work | Actual work |
| --- | --- | --- | --- | --- | --- | --- | --- | --- | --- | --- | --- | --- | --- | --- | --- |
| 29 | 1.5 | **eService Online** |  | 15d | 2024-03-06 A | 2024-03-27 |  | 99% | 0d | 5d |  |  |  | 40h | 40h |
| 30 | 1.5.1 | Bulk Plant Board: Bulker not shown after it is loaded#308 |  | 3d | 2024-03-06 A | 2024-03-11 A |  | 100% |  |  |  | start no earlier than 2024-03-06 | 张院 | 24h | 24h |
| 31 | 1.5.2 | Test |  | 2d | 2024-03-25 A | 2024-03-27 A | 27 | 100% |  |  |  |  | 孙婷 | 16h | 16h |
| 32 | 1.5.3 | eServiceOnline 6.12 release | milestone | 0d | 2024-03-27 | 2024-03-27 | 31 |  |  | 5d |  |  |  |  |  |
| 33 | 1.6 | **Digital Resource Board (DRB) – Job board** |  | 13d | 2024-03-11 | 2024-03-28 |  |  |  | 4d |  |  |  | 120h |  |
| 34 | 1.6.1 | Requirements analysis and clarification |  | 2d | 2024-03-11 | 2024-03-13 |  |  |  | 4d | 0d | start no earlier than 2024-03-11 | 孙婷 | 16h |  |
| 35 | 1.6.2 | Creating a backhaul |  | 3d | 2024-03-11 | 2024-03-14 | 34FS-2d |  |  | 4d | 0d |  | 童韬 | 24h |  |
| 36 | 1.6.3 | Creating a haul from a program |  | 3d | 2024-03-14 | 2024-03-19 | 35 |  |  | 4d | 0d |  | 童韬 | 24h |  |
| 37 | 1.6.4 | **Job Board Bulker Assignment Update** |  | 5d | 2024-03-19 | 2024-03-26 |  |  |  | 4d |  |  |  | 40h |  |
| 38 | 1.6.4.1 | Use Client Short Name |  | 1d | 2024-03-19 | 2024-03-20 | 36 |  |  | 4d | 0d |  | 童韬 | 8h |  |
| 39 | 1.6.4.2 | Add Icons for haul type |  | 2d | 2024-03-20 | 2024-03-22 | 38 |  |  | 4d | 0d |  | 童韬 | 16h |  |
| 40 | 1.6.4.3 | Look of the information on the Job Board: |  | 2d | 2024-03-22 | 2024-03-26 | 39 |  |  | 4d | 0d |  | 童韬 | 16h |  |
| 41 | 1.6.5 | Test |  | 2d | 2024-03-26 | 2024-03-28 | 40 |  |  | 4d |  |  | 孙婷 | 16h |  |
| 42 | 1.7 | **eService Framework Upgrade** |  | 4d? | 2009-11-16 | 2009-11-20 |  |  |  | 3d |  |  | Migule | 32h |  |
| 43 | 1.7.1 | **Blend Library** |  | 1d? | 2009-11-16 | 2009-11-17 |  |  |  | 3748d |  |  |  |  |  |
| 44 | 1.7.1.1 | **Blend Signature** |  | 1d? | 2009-11-16 | 2009-11-17 |  |  |  | 3748d | 0d |  |  |  |  |
| 45 | 1.7.1.1.1 | Dry blend signature: generate a hash string from 1T breakdown of preblend ingredients. |  | 1d? | 2009-11-16 | 2009-11-17 |  |  |  | 3748d |  |  |  |  |  |
| 46 | 1.7.1.1.2 | Full blend signature: generate a hash string from 1 breakdown of all ingredients. |  | 1d? | 2009-11-16 | 2009-11-17 |  |  |  | 3748d |  |  |  |  |  |
| 47 | 1.7.1.2 | The purpose for this signature is to compare the blends by ingredients not by other artifacts it is attached. | manual | 1d? | 2009-11-16 | 2009-11-17 |  |  |  |  |  |  |  |  |  |
| 48 | 1.7.2 | **Well Library** |  | 3d? | 2009-11-16 | 2009-11-19 |  |  |  | 3749d |  |  |  |  |  |
| 49 | 1.7.2.1 | **Excess Calculation** |  | 1d? | 2009-11-17 | 2009-11-18 | 44 |  |  | 3748d | 0d |  |  |  |  |
| 50 | 1.7.2.1.1 | **There are 2 excesses that are desired** |  | 1d? | 2009-11-17 | 2009-11-18 |  |  |  | 3748d |  |  |  |  |  |
| 51 | 1.7.2.1.1.1 | Pumped Excess |  | 1d? | 2009-11-17 | 2009-11-18 |  |  |  | 3748d |  |  |  |  |  |
| 52 | 1.7.2.1.1.2 | Required Excess |  | 1d? | 2009-11-17 | 2009-11-18 |  |  |  | 3748d |  |  |  |  |  |
| 53 | 1.7.2.2 | The above calculations will use eService as the data source. This will provide details of the excess per job and add this data to the data warehouse so that this information is available to the BI tool. |  | 1d? | 2009-11-16 | 2009-11-17 |  |  |  | 3751d |  |  |  |  |  |
| 54 | 1.7.2.3 | The calculation would also like to be used from the job design template through API, or other connection, from the excel template. |  | 1d? | 2009-11-16 | 2009-11-17 |  |  |  | 3751d |  |  |  |  |  |
| 55 | 1.7.2.4 | Application Integration |  | 1d | 2009-11-18 | 2009-11-19 | 49 |  |  | 3748d | 0d |  |  |  |  |

| ID | WBS | Task | Duration | Start | Finish | Predecessors | Total slack |
| --- | --- | --- | --- | --- | --- | --- | --- |
| 56 | 1.7.3 | **Messaging Library** | 1d? | 2009-11-19 | 2009-11-20 |  | 0d |
| 57 | 1.7.3.1 | PLC data real-time transmission | 1d | 2009-11-19 | 2009-11-20 | 55 | 3748d |
